Schedule from a web Gantt chart, 2024-05-27 to 2024-07-10.
Saturdays and Sundays are off

## Schedule

| ID | WBS | Task | Type | Duration | Start | Finish | Predecessors | Complete | Status |
| --- | --- | --- | --- | --- | --- | --- | --- | --- | --- |
| 2 | 1 | Align with CLT about ASME cal. report/FEA report requirement |  | 2d | 2024-05-27 | 2024-05-28 |  | 100% |  |
| 3 | 2 | Design Requirements Alignment Between YLC and CLT |  | 15d | 2024-05-27 | 2024-06-14 |  | 100% |  |
| 4 | 3 | **FEA Part** |  | 29d | 2024-05-29 | 2024-07-08 | 2 | 100% | waiting |
| 5 | 3.1 | 1st FEA for XR7 FrC Condenser |  | 5d | 2024-05-29 | 2024-06-04 | 2 | 100% | waiting |
| 6 | 3.2 | 1st FEA for XR7 FrB Cooler |  | 5d | 2024-06-05 | 2024-06-11 | 5 | 100% | waiting |
| 7 | 3.3 | 2nd FEA for XR7 FrC Condenser due to shell thickness change |  | 4d | 2024-06-12 | 2024-06-17 | 6 | 100% | waiting |
| 8 | 3.4 | 1st FEA Report for XR7 FrC Condenser(CLT Review) | fixed end | 8d | 2024-06-18 | 2024-06-27 | 7 | 100% | waiting |
| 9 | 3.5 | 2nd FEA for XR7 FrB Cooler due to shell thickness change |  | 3d | 2024-06-28 | 2024-07-02 | 8 | 100% | waiting |
| 10 | 3.6 | 3rd FEA for XR7 FrC Condenser due to TS thickness change |  | 3d | 2024-07-03 | 2024-07-05 | 9 | 100% | waiting |
| 11 | 3.7 | 3rd FEA for XR7 FrB Cooler due to TS thickness change |  | 3d | 2024-07-03 | 2024-07-05 | 9 | 100% | waiting |
| 12 | 3.8 | 1st FEA Report for XR7 FrB Cooler | fixed end | 4d | 2024-07-03 | 2024-07-08 | 8, 9 | 100% | waiting |
| 13 | 3.9 | 2nd FEA Report for XR7 FrC Condenser | fixed end | 4d | 2024-07-03 | 2024-07-08 | 8, 9 | 100% | waiting |
| 14 | 4 | **PV Part** |  | 31d | 2024-05-29 | 2024-07-10 |  | 100% |  |
| 15 | 4.1 | Check New Economizer Design with ASME Compress |  | 11d | 2024-05-29 | 2024-06-12 | 2 | 100% | waiting |
| 16 | 4.2 | 1st ASME Cal Report for XR7 Condenser/Cooler/Float Box(No Dwg) | fixed end | 11d | 2024-05-29 | 2024-06-12 | 2 | 100% | waiting |
| 17 | 4.3 | 2nd ASME Cal Report for XR7 Condenser/Cooler/Economizer/Float Box(Shell thickness change) | fixed end | 9d | 2024-06-13 | 2024-06-25 | 16 | 100% | waiting |
| 18 | 4.4 | 3rd ASME Cal Report for XR7 Condenser/Cooler/Economizer/Float Box(YLC Comments) | fixed end | 9d | 2024-06-26 | 2024-07-08 | 17 | 100% | waiting |
| 19 | 4.5 | 4th ASME Cal Report for XR7 Condenser/Cooler/Economizer/Float Box(YLC Dwg) | fixed end | 2d | 2024-07-09 | 2024-07-10 | 18 | 100% | waiting |
| 20 | 4.6 | 1st ASME Dwg Review for XR7 Condenser/Cooler/Economizer/Float Box | fixed start | 4d | 2024-07-05 | 2024-07-10 |  | 100% |  |
